# nibKame

How a schedule from GanttProject changed from version to version. A marks actual dates.

## Version 1 (saved 2010-11-03)

Note of the change: replaced "chart.tex", which is written in LaTeX, with "project.gan", a GanttProject file.

| ID | Task | Duration | Start | Finish |
| --- | --- | --- | --- | --- |
| 1 | 型推論部の作成 | 10d | 2010-10-14 | 2010-10-27 |
| 2 | 中間言語への変換部の作成 | 5d | 2010-10-14 | 2010-10-20 |
| 3 | 正規化部の作成 | 10d | 2010-10-21 | 2010-11-03 |
| 4 | 最適化部の作成 | 10d | 2010-11-04 | 2010-11-17 |
| 5 | 仮想機械語への変換部の作成 | 5d | 2010-11-18 | 2010-11-24 |
| 6 | 仮想機械語最適化部の作成 | 5d | 2010-11-18 | 2010-11-24 |
| 7 | 基本仕様のデバッグ | 10d | 2010-11-25 | 2010-12-08 |
| 8 | 標準ライブラリの作成 | 13d | 2010-11-01 | 2010-11-17 |
| 9 | FFIの作成 | 10d | 2010-11-25 | 2010-12-08 |
| 10 | 構文木変換部の作成 | 5d | 2010-12-09 | 2010-12-15 |
| 11 | 字句・構文解析部の作成 | 5d | 2010-12-09 | 2010-12-15 |
| 12 | GCの作成 | 22d | 2010-12-16 | 2011-01-14 |
| 13 | 全体的なデバッグ | 22d | 2010-12-16 | 2011-01-14 |

## Version 2 (saved 2010-11-03)

Note of the change: modified project.gan.

Last finish stays 2011-01-14.

Added:

| ID | Task | Duration | Start | Finish | Resources |
| --- | --- | --- | --- | --- | --- |
| 14 | 言語仕様策定 | 9d | 2010-10-11 | 2010-10-21 |  |
| 15 | S式表現の仕様策定 | 1d | 2010-10-11 | 2010-10-11 | na4zagin3 |
| 16 | S式リーダモジュールの作成 | 1d | 2010-10-11 | 2010-10-11 |  |

Changed:

| ID | Task | Start | Finish | Duration | Predecessors | Other |
| --- | --- | --- | --- | --- | --- | --- |
| 1 | 型推論部の作成 |  | 2010-10-27 → 2010-10-20 (-7d) | 10d → 5d |  |  |
| 2 | S式→中間言語への変換部の作成 | 2010-10-14 → 2010-10-12 (-2d) | 2010-10-20 → 2010-10-18 (-2d) |  | none → 16 | was named 中間言語への変換部の作成 |
| 7 | 基本仕様のデバッグ |  |  |  | none → 1, 2, 3, 4, 5, 6 |  |
| 13 | 全体的なデバッグ |  |  |  | none → 7, 8, 10, 11 |  |

## Version 3 (saved 2010-11-04)

Note of the change: Merge branch 'master' of github.com:ikk775/nibKame

Last finish 2011-01-14 → 2011-01-17 (+3d).

Added:

| ID | Task | Duration | Start | Finish | Predecessors |
| --- | --- | --- | --- | --- | --- |
| 10 | 基本部分完成 | 0d | 2010-11-24 | 2010-11-24 | 1, 4, 5, 8 |
| 16 | 目標達成 | 0d | 2010-12-16 | 2010-12-16 | 10, 11, 12, 13, 14, 15 |
| 19 | 完成 | 0d | 2011-01-17 | 2011-01-17 | 17, 18 |

Changed:

| ID | Task | Start | Finish | Duration | Complete | Predecessors | Other |
| --- | --- | --- | --- | --- | --- | --- | --- |
| 1 | 言語仕様策定 |  | 2010-10-21 → 2010-11-03 (+13d) | 9d → 18d | 0% → 80% |  | resources none → 小堀育男 [50%]; 酒本典明 [50%] |
| 2 | S式リーダモジュールの作成 |  | 2010-10-11 → 2010-11-03 (+23d) | 1d → 18d | 0% → 90% |  | resources none → 小堀育男 [30%] |
| 3 | S式表現の仕様策定 |  | 2010-10-11 → 2010-11-03 (+23d) | 1d → 18d |  |  | resources na4zagin3 → 酒本典明 [50%] |
| 4 | S式→中間言語への変換部の作成 | 2010-10-12 → 2010-11-04 (+23d) | 2010-10-18 → 2010-11-10 (+23d) |  |  | 2 → 2, 3 | resources na4zagin3 → 酒本典明 |
| 5 | 型推論部の作成 | 2010-10-14 → 2010-11-11 (+28d) | 2010-10-20 → 2010-11-17 (+28d) |  |  | none → 4 | resources ikk775 → 小堀育男 |
| 6 | 正規化部の作成 | 2010-10-21 → 2010-11-04 (+14d) | 2010-11-03 → 2010-11-16 (+13d) | 10d → 9d |  | none → 1 | resources na4zagin3 → 酒本典明 |
| 7 | 最適化部の作成 | 2010-11-04 → 2010-11-17 (+13d) | 2010-11-17 → 2010-11-30 (+13d) |  |  | none → 6 | resources na4zagin3 → 酒本典明 |
| 8 | 仮想機械語への変換部の作成 | 2010-11-18 → 2010-11-17 (-1d) | 2010-11-24 → 2010-11-23 (-1d) |  |  | none → 6 | resources na4zagin3 → 酒本典明 |
| 9 | 仮想機械語最適化部の作成 | 2010-11-18 → 2010-11-24 (+6d) | 2010-11-24 → 2010-11-30 (+6d) |  |  | none → 8 | resources ikk775 → 小堀育男 |
| 11 | 基本仕様のデバッグ |  |  |  |  | 5, 4, 6, 7, 8, 9 → 10 | resources na4zagin3; ikk775 → 小堀育男; 酒本典明 |
| 12 | 標準ライブラリの作成 | 2010-11-01 → 2010-10-22 (-10d) | 2010-11-17 → 2010-11-09 (-8d) |  | 0% → 13% | none → 1SS | resources na4zagin3; ikk775 → 小堀育男; 酒本典明 |
| 13 | FFIの作成 |  |  |  |  | none → 10 | resources ikk775 → 小堀育男 |
| 14 | 構文木変換部の作成 |  |  |  |  |  | resources na4zagin3 → 酒本典明 |
| 15 | 字句・構文解析部の作成 |  |  |  |  |  | resources ikk775 → 小堀育男 |
| 17 | 全体的なデバッグ |  |  |  |  | 11, 12, 14, 15 → 10, 12, 13, 14, 15 | resources na4zagin3; ikk775 → 小堀育男; 酒本典明 |
| 18 | GCの作成 |  |  |  |  |  | resources na4zagin3; ikk775 → 小堀育男; 酒本典明 |

## Version 4 (saved 2010-11-04)

Note of the change: updated project management files.

Last finish stays 2011-01-17.

Changed:

| ID | Task | Other |
| --- | --- | --- |
| 1 | 言語仕様策定 | resources 小堀育男 [50%]; 酒本典明 [50%] → na4zagin3 [50%]; ikk775 [50%] |
| 2 | S式リーダモジュールの作成 | resources 小堀育男 [30%] → ikk775 [30%] |
| 3 | S式表現の仕様策定 | resources 酒本典明 [50%] → na4zagin3 [50%] |
| 4 | S式→中間言語への変換部の作成 | resources 酒本典明 → na4zagin3 |
| 5 | 型推論部の作成 | resources 小堀育男 → ikk775 |
| 6 | 正規化部の作成 | resources 酒本典明 → na4zagin3 |
| 7 | 最適化部の作成 | resources 酒本典明 → na4zagin3 |
| 8 | 仮想機械語への変換部の作成 | resources 酒本典明 → na4zagin3 |
| 9 | 仮想機械語最適化部の作成 | resources 小堀育男 → ikk775 |
| 11 | 基本仕様のデバッグ | resources 小堀育男; 酒本典明 → na4zagin3; ikk775 |
| 12 | 標準ライブラリの作成 | resources 小堀育男; 酒本典明 → na4zagin3; ikk775 |
| 13 | FFIの作成 | resources 小堀育男 → ikk775 |
| 14 | 構文木変換部の作成 | resources 酒本典明 → na4zagin3 |
| 15 | 字句・構文解析部の作成 | resources 小堀育男 → ikk775 |
| 17 | 全体的なデバッグ | resources 小堀育男; 酒本典明 → na4zagin3; ikk775 |
| 18 | GCの作成 | resources 小堀育男; 酒本典明 → na4zagin3; ikk775 |

## Version 5 (saved 2010-11-04)

Note of the change: snapshotted the chart in the first ad interim report.

Last finish stays 2011-01-17.

Changed:

| ID | Task | Complete | Other |
| --- | --- | --- | --- |
| 1 | 言語仕様策定 | 80% → 72% | resources na4zagin3 [50%]; ikk775 [50%] → ikk775 [50%]; na4zagin3 [50%]; baseline start none → 2010-10-11; baseline finish none → 2010-11-03 |
| 2 | S式リーダモジュールの作成 |  | baseline start none → 2010-10-11; baseline finish none → 2010-11-03 |
| 3 | S式表現の仕様策定 |  | baseline start none → 2010-10-11; baseline finish none → 2010-11-03 |
| 4 | S式→中間言語への変換部の作成 |  | baseline start none → 2010-11-04; baseline finish none → 2010-11-10 |
| 5 | 型推論部の作成 |  | baseline start none → 2010-11-11; baseline finish none → 2010-11-17 |
| 6 | 正規化部の作成 |  | baseline start none → 2010-11-04; baseline finish none → 2010-11-16 |
| 7 | 最適化部の作成 |  | baseline start none → 2010-11-17; baseline finish none → 2010-11-30 |
| 8 | 仮想機械語への変換部の作成 |  | baseline start none → 2010-11-17; baseline finish none → 2010-11-23 |
| 9 | 仮想機械語最適化部の作成 |  | baseline start none → 2010-11-24; baseline finish none → 2010-11-30 |
| 10 | 基本部分完成 |  | baseline start none → 2010-11-24; baseline finish none → 2010-11-24 |
| 11 | 基本仕様のデバッグ |  | resources na4zagin3; ikk775 → ikk775; na4zagin3; baseline start none → 2010-11-25; baseline finish none → 2010-12-08 |
| 12 | 標準ライブラリの作成 |  | resources na4zagin3; ikk775 → ikk775; na4zagin3; baseline start none → 2010-10-22; baseline finish none → 2010-11-09 |
| 13 | FFIの作成 |  | baseline start none → 2010-11-25; baseline finish none → 2010-12-08 |
| 14 | 構文木変換部の作成 |  | baseline start none → 2010-12-09; baseline finish none → 2010-12-15 |
| 15 | 字句・構文解析部の作成 |  | baseline start none → 2010-12-09; baseline finish none → 2010-12-15 |
| 16 | 目標達成 |  | baseline start none → 2010-12-16; baseline finish none → 2010-12-16 |
| 17 | 全体的なデバッグ |  | resources na4zagin3; ikk775 → ikk775; na4zagin3; baseline start none → 2010-12-16; baseline finish none → 2011-01-14 |
| 18 | GCの作成 |  | resources na4zagin3; ikk775 → ikk775; na4zagin3; baseline start none → 2010-12-16; baseline finish none → 2011-01-14 |
| 19 | 完成 |  | baseline start none → 2011-01-17; baseline finish none → 2011-01-17 |

## Version 6 (saved 2010-11-14)

Note of the change: 型推論部ほぼ完成

Last finish stays 2011-01-17.

Changed:

| ID | Task | Complete |
| --- | --- | --- |
| 5 | 型推論部の作成 | 0% → 44% |
